| uid | wbsOrder | name | start | finish | notes | actualStart | actualFinish | percentComplete | milestone | dependencies | deadline |
| --- | --- | --- | --- | --- | --- | --- | --- | --- | --- | --- | --- |
| 157 | 1 | 席 1・3(DFC-2870・CR-783・CR-782)の合流 | 2026-10-17T05:30:00 | 2026-10-17T08:28:00 | 終わり = 統合の枝を席 3 へ合流した 69e7234f の時刻。 | 2026-10-17T05:30:00 | 2026-10-17T08:28:00 | 100 |  |  |  |
| 160 | 2 | 不具合の聞き取り(実績を入力する UI) | 2026-10-17T05:30:00 | 2026-10-17T09:15:00 | 終わり = ad6b6a10(DFC-2980・2981 の記録)。 | 2026-10-17T05:30:00 | 2026-10-17T09:15:00 | 100 |  |  |  |
| 163 | 3 | CR-789(タスクグループを運ぶ手掛かり, 束 A)の実装 | 2026-10-17T06:00:00 | 2026-10-17T12:44:00 | 2b6ff44b。 | 2026-10-17T06:00:00 | 2026-10-17T12:44:00 | 100 |  |  |  |
| 164 | 4 | CR-787(パネルの幅, 束 B)の実装 | 2026-10-17T06:00:00 | 2026-10-17T11:48:00 | ac1261ce。 | 2026-10-17T06:00:00 | 2026-10-17T11:48:00 | 100 |  |  |  |
| 166 | 5 | CR-786(最前面に配置, 束 D)の実装 | 2026-10-17T06:00:00 | 2026-10-17T10:50:00 | 0173c3cd。 | 2026-10-17T06:00:00 | 2026-10-17T10:50:00 | 100 |  |  |  |
| 161 | 6 | 聞き取りで出た不具合(DFC-2980)の直し | 2026-10-17T09:16:00 | 2026-10-17T10:24:00 | 8a74bd1b。 | 2026-10-17T09:16:00 | 2026-10-17T10:24:00 | 100 |  |  |  |
| 169 | 7 | CR-784(進行中の印を (→) に)の適用 | 2026-10-17T09:16:00 | 2026-10-17T10:24:00 | e80ff653。 | 2026-10-17T09:16:00 | 2026-10-17T10:24:00 | 100 |  |  |  |
| 170 | 8 | CR-785(ヘルプのリンクと行, DFC-3000〜3006)の適用 | 2026-10-17T09:43:00 | 2026-10-17T13:14:00 | 8cc9c320。 | 2026-10-17T09:43:00 | 2026-10-17T13:14:00 | 100 |  |  |  |
| 165 | 9 | CR-788(担当の欄, 束 C)の実装 | 2026-10-17T11:48:00 | 2026-10-17T12:36:00 | fbf21fa3。 | 2026-10-17T11:48:00 | 2026-10-17T12:36:00 | 100 |  |  |  |
| 158 | 10 | GT-2 の赤の直し(CR-782・785・787・788) | 2026-10-17T13:20:00 | 2026-10-17T15:06:00 | 6ad2a7fd。 | 2026-10-17T13:20:00 | 2026-10-17T15:06:00 | 100 |  |  |  |
| 162 | 11 | α のチェックリストの行を出荷ビルドで確かめる | 2026-10-17T15:06:00 | 2026-10-17T18:57:00 | チェックリストの席 3e365fcf。 | 2026-10-17T15:06:00 | 2026-10-17T18:57:00 | 100 |  |  |  |
| 171 | 12 | 打鍵が欄から漏れる件(DFC-3100〜3103)の掃きと直し | 2026-10-17T18:57:00 | 2026-10-17T19:51:00 | ec9803f1。 | 2026-10-17T18:57:00 | 2026-10-17T19:51:00 | 100 |  |  |  |
| 172 | 13 | CR-790(大きな見本の矛盾を減らす)の適用 | 2026-10-17T19:51:00 | 2026-10-17T21:13:00 | ab1e1a3c。 | 2026-10-17T19:51:00 | 2026-10-17T21:13:00 | 100 |  |  |  |
| 175 | 14 | CR-791(取次の説明とスキーマの資源)の適用 | 2026-10-17T20:45:00 | 2026-10-18T02:52:00 | 0829239a。 | 2026-10-17T20:45:00 | 2026-10-18T02:52:00 | 100 |  |  |  |
| 159 | 15 | α 前の段ごとの GT-2 と push(ab1e1a3c・f1a0ec6d・815ecba8・0829239a) | 2026-10-17T21:13:00 | 2026-10-18T03:16:00 | 52eb7112(引継書)。 | 2026-10-17T21:13:00 | 2026-10-18T03:16:00 | 100 |  |  |  |
| 173 | 16 | CR-793・794(タスクのツールチップ)の適用 | 2026-10-17T21:13:00 | 2026-10-17T22:44:00 | f1a0ec6d。 | 2026-10-17T21:13:00 | 2026-10-17T22:44:00 | 100 |  |  |  |
| 174 | 17 | CR-792(改名 14 件と状態の語)の段 0〜2 | 2026-10-17T21:53:00 | 2026-10-18T02:13:00 | 815ecba8。 | 2026-10-17T21:53:00 | 2026-10-18T02:13:00 | 100 |  |  |  |
| 176 | 18 | RS-61 の語とダウンロード頁の語(DFC-3280) | 2026-10-18T05:29:00 | 2026-10-18T06:06:00 | fa609e26。 | 2026-10-18T05:29:00 | 2026-10-18T06:06:00 | 100 |  |  |  |
| 177 | 19 | CR-795・797(遅延診断の詰み・自分で走り直さない)の適用 | 2026-10-18T06:58:00 | 2026-10-18T08:27:00 | 8b212b74。 | 2026-10-18T06:58:00 | 2026-10-18T08:27:00 | 100 |  |  |  |
| 178 | 20 | CR-796(GRS Relay の 7 片)の適用 | 2026-10-18T08:27:00 | 2026-10-18T13:11:00 | 2be0c96c。 | 2026-10-18T08:27:00 | 2026-10-18T13:11:00 | 100 |  |  |  |
| 45 | 21 | CR-695(対話欄の廃止)—— CR-796 の 6 片目が当てた | 2026-10-18T11:08:00 | 2026-10-18T12:08:00 | 56a75399。 | 2026-10-18T11:08:00 | 2026-10-18T12:08:00 | 100 |  |  |  |
| 179 | 22 | DFC-3302(検索窓の IME)と CR-798〜802(チェック列・スキーマの部分読み) | 2026-10-18T17:06:00 | 2026-10-18T20:48:00 | e7770cde。 | 2026-10-18T17:06:00 | 2026-10-18T20:48:00 | 100 |  |  |  |
| 180 | 23 | サーバー同期のデモ(DFC-3070・3071)の組み立てと紹介頁 05 | 2026-10-18T22:19:00 | 2026-10-19T00:35:00 | afb41677。台帳の行は 仕様待ち のまま(測り直す)。 | 2026-10-18T22:19:00 | 2026-10-19T00:35:00 | 100 |  |  |  |
| 181 | 24 | 実地の利用の中継の直し(CR-803〜810) | 2026-10-19T07:56:00 | 2026-10-19T09:19:00 | d0a2f09e。 | 2026-10-19T07:56:00 | 2026-10-19T09:19:00 | 100 |  |  |  |
| 182 | 25 | コメントボックスの字の大きさ(CR-809・811・812) | 2026-10-19T08:59:00 | 2026-10-19T10:07:00 | 8b3ba840。 | 2026-10-19T08:59:00 | 2026-10-19T10:07:00 | 100 |  |  |  |
| 183 | 26 | CR-813 の 1 片目(修正の記録の .tsv・語の改め) | 2026-10-19T10:03:00 | 2026-10-19T10:20:00 | e59facc9。 | 2026-10-19T10:03:00 | 2026-10-19T10:20:00 | 100 |  |  |  |
| 184 | 27 | CR-814・816・817(AI の修正の記録・見出しの箱・説明の追従)の適用 | 2026-10-19T10:57:00 | 2026-10-19T11:25:00 | 34d6ee84。 | 2026-10-19T10:57:00 | 2026-10-19T11:25:00 | 100 |  |  |  |
| 139 | 28 | α の GT-2(34d6ee84、赤 3 件を残して出した)と push | 2026-10-19T11:25:00 | 2026-10-19T12:13:00 | 1bffcf05 が赤 3 件と PERF の数を引継書に書いた。 | 2026-10-19T11:25:00 | 2026-10-19T12:13:00 | 100 |  |  |  |
| 140 | 29 | α 版のリリース(Alpha-20261019T022508Z) | 2026-10-19T11:25:00 | 2026-10-19T11:25:00 | タグはビルド版 2026.1019.22508(UTC 02:25:08)。 | 2026-10-19T11:25:00 | 2026-10-19T11:25:00 | 100 | True |  |  |
| 185 | 30 | main への push を止める仕組み(JDG-2930〜2934) | 2026-10-20T03:30:00 | 2026-10-20T04:09:00 | 9c552a6e・90dc896e。始まりは推定。 | 2026-10-20T03:30:00 | 2026-10-20T04:09:00 | 100 |  |  |  |
| 186 | 31 | CR-819(studies/ への改名)・develop への改名・README・SECURITY | 2026-10-20T04:09:00 | 2026-10-20T05:03:00 | 83c98165。 | 2026-10-20T04:09:00 | 2026-10-20T05:03:00 | 100 |  |  |  |
| 187 | 32 | α のリリースノート(英日)と紹介頁の更新(JDG-2960・2961) | 2026-10-20T05:03:00 | 2026-10-20T05:59:00 | be281670。 | 2026-10-20T05:03:00 | 2026-10-20T05:59:00 | 100 |  |  |  |
| 188 | 33 | CR-820(配る物の版とバイト列を中身が変わるまで保つ)の適用 | 2026-10-20T05:59:00 | 2026-10-20T06:33:00 | 66aa3a43。 | 2026-10-20T05:59:00 | 2026-10-20T06:33:00 | 100 |  |  |  |
| 189 | 34 | CR-821(済んだ記録を history/ へ)の適用 | 2026-10-20T06:33:00 | 2026-10-20T06:41:00 | bbdfeec2。 | 2026-10-20T06:33:00 | 2026-10-20T06:41:00 | 100 |  |  |  |
| 190 | 35 | CR-822(版の規則を 1 つの表へ)の適用 | 2026-10-20T06:41:00 | 2026-10-20T07:39:00 | 9da0f3fa。 | 2026-10-20T06:41:00 | 2026-10-20T07:39:00 | 100 |  |  |  |
| 191 | 36 | 不具合 2 件・改善 3 件の記録と β に向けた計画の書き直し(記録と計画の子セッション) | 2026-10-20T23:20:00 | 2026-10-22T05:46:00 | 台帳の行 DFC-3390〜3410・裁定 JDG-3000〜3033、計画。終わり = この子セッションが計画を最後にコミットした 4ad56f84 の時刻。 | 2026-10-20T23:20:00 | 2026-10-22T05:46:00 | 100 |  |  |  |
| 147 | 37 | 週の使用量の戻り(10-21 水 19:00)と仕事の再開(10-22 木 08:15、第 1 波) | 2026-10-22T08:15:00 | 2026-10-22T08:15:00 | 記録と計画の子セッションが 10-21 未明に計画を書き直した。利用者と調整役が 10-22 08:00 に見直し(JDG-3043〜3047)、第 1 波の子セッションが 08:15 に動き出した。 | 2026-10-22T08:15:00 | 2026-10-22T08:15:00 | 100 | True |  |  |
| 198 | 38 | 第 1 波の合流と GT-2(赤 3 件が消えたか)・develop へ push | 2026-10-22T12:15:00 | 2026-10-22T15:15:00 |  |  |  | 0 |  | 192 1 0 7, 193 1 0 7, 194 1 0 7 |  |
| 255 | 39 | 第 2 波 W1〜W4 の合流と GT-2(中継の版の上げは 1 回) | 2026-10-24T03:00:00 | 2026-10-24T06:00:00 | W1〜W4 の掃除が集まる。W5(台帳と記録)はこの後。 |  |  | 0 |  | 256 1 0 7, 117 1 0 7, 258 1 0 7, 259 1 0 7 |  |
| 261 | 40 | 第 2 波の後の基準線の下げ(G1・G3)と GT-2(D1・D7 を外す) | 2026-10-24T18:00:00 | 2026-10-24T21:00:00 | 棚卸しの 10 節の「順」。基準線を下げるだけの仕事は調整役が最後に 1 回で行う。 |  |  | 0 |  | 260 1 0 7 |  |
| 87 | 41 | CR-767(状態機械の原稿)の合流と確かめ | 2026-10-25T09:00:00 | 2026-10-25T10:00:00 |  |  |  | 0 |  | 86 1 0 7 |  |
| 105 | 42 | CR-768(保存の媒体の型)の C の合流と確かめ | 2026-10-25T14:00:00 | 2026-10-25T15:00:00 |  |  |  | 0 |  | 104 1 0 7 |  |
| 199 | 43 | 週の使用量の戻り(10-28 水 19:00) | 2026-10-28T19:00:00 | 2026-10-28T19:00:00 |  |  |  | 0 | True |  |  |
| 36 | 44 | 片付けの合流と台帳の締め | 2026-10-30T07:00:00 | 2026-10-30T09:00:00 | 集まる依存線は描いていない(下の中央のコメント)。 |  |  | 0 |  |  |  |
| 31 | 45 | W4・W5 の合流と GT-2・push | 2026-10-31T03:00:00 | 2026-10-31T06:00:00 |  |  |  | 0 |  | 30 1 0 7 |  |
| 141 | 46 | 片付けの入った一括の GT-2 と push | 2026-10-31T06:00:00 | 2026-10-31T09:00:00 |  |  |  | 0 |  |  |  |
| 210 | 47 | PERF の測り(OneDrive を止めて) | 2026-11-01T09:00:00 | 2026-11-01T11:00:00 |  |  |  | 0 |  | 209 1 0 7 |  |
| 207 | 48 | 不具合の合流と GT-2・push | 2026-11-04T19:00:00 | 2026-11-04T22:00:00 |  |  |  | 0 |  |  |  |
| 216 | 49 | 週の使用量の戻り(11-04 水 19:00) | 2026-11-04T19:00:00 | 2026-11-04T19:00:00 |  |  |  | 0 | True |  |  |
| 48 | 50 | AI 連携の合流と GT-2・push | 2026-11-05T19:00:00 | 2026-11-05T22:00:00 |  |  |  | 0 |  |  |  |
| 221 | 51 | 新機能の合流と GT-2・push | 2026-11-06T11:00:00 | 2026-11-06T14:00:00 |  |  |  | 0 |  | 220 1 0 7 |  |
| 228 | 52 | 最後の合流と PERF・GT-2(重い試験は 1 回だけ) | 2026-11-07T21:00:00 | 2026-11-08T03:00:00 |  |  |  | 0 |  | 227 1 0 7 |  |
| 229 | 53 | node tools/release_version.mjs Beta・リリースノート(英日)・README の版の行 | 2026-11-08T03:00:00 | 2026-11-08T07:00:00 |  |  |  | 0 |  | 228 1 0 7 |  |
| 230 | 54 | リリースの sha の GT-2 と develop → main の PR | 2026-11-08T07:00:00 | 2026-11-08T10:00:00 |  |  |  | 0 |  | 229 1 0 7 |  |
| 232 | 55 | Pages の配備(gh workflow run pages.yml --ref main) | 2026-11-08T11:00:00 | 2026-11-08T12:00:00 |  |  |  | 0 |  | 231 1 0 7 |  |
| 49 | 56 | 計画の終わり | 2026-11-08T13:00:00 | 2026-11-08T13:00:00 |  |  |  | 0 | True | 234 1 0 7 |  |
| 200 | 57 | 遅延診断の ? と炎の裁定(DFC-3390: 基準日より後を開始で読むか・壁の件数も外すか)に答える | 2026-10-22T21:00:00 | 2026-10-22T22:00:00 | 問うのは裁定 6 件の問いの子セッション(JDG-3047、1 問ずつ JDG-1753)。CR の起草と当ては答えの後。 |  |  | 0 |  | 250 1 0 7 |  |
| 218 | 58 | ハイパーリンク(MSPDI に写すか・コメントのアイコンの置き場)とダークの色の導き方(JDG-326 の ② を覆す)に答える | 2026-10-22T22:00:00 | 2026-10-22T23:00:00 | 問うのは裁定 6 件の問いの子セッション(JDG-3047)。CR の起草(217)は答えの後。 |  |  | 0 |  | 250 1 0 7 |  |
| 238 | 59 | DFC-3397(左端に出す名前と札)の細部の協議に答える | 2026-10-22T23:00:00 | 2026-10-23T00:00:00 | 問うのは裁定 6 件の問いの子セッション(JDG-3047)。CR の起草(237)は答えの後。 |  |  | 0 |  | 250 1 0 7 |  |
| 254 | 60 | DFC-3392・3395(プロンプトの写し方・保存の確認の文)の裁定に答える | 2026-10-23T00:00:00 | 2026-10-23T01:00:00 | 問うのは裁定 6 件の問いの子セッション(JDG-3047)。 |  |  | 0 |  | 250 1 0 7 |  |
| 263 | 61 | 見本の Developer C の重なり(C7, AS-8 のためのわざと)と pages.yml の起動(E17)の裁定に答える | 2026-10-23T06:45:00 | 2026-10-23T07:15:00 | 棚卸しの 11 節。C7 は計画 196 から外すのを棚卸しが推す。 |  |  | 0 |  | 248 1 0 7 |  |
| 252 | 62 | 憲章の下書き(temp/charter-draft/CHARTER-ja.md)を直す | 2026-10-23T21:00:00 | 2026-10-23T23:00:00 | 利用者 2026-10-22「プロジェクト憲章も次の子セッションに引き継がせろ。」下書きは git に無視される所にある。 |  |  | 0 |  |  |  |
| 241 | 63 | 取次からページのアドレスを得る直し(DFC-3400・3401)の案 B1〜B6 に答える | 2026-10-27T21:00:00 | 2026-10-27T22:00:00 | 案は DFC-3400 の対応案の欄。暫定の直しはダウンロード頁の文で済んだ(CR-823)。恒久は後でじっくり考える(JDG-3012)。 |  |  | 0 |  |  |  |
| 244 | 64 | DFC-3410(名前付きのフィルタの条件)の細部に答える | 2026-10-31T11:00:00 | 2026-10-31T12:00:00 | 問うのは起草の子セッション(JDG-1753)。 |  |  | 0 |  | 243 1 0 7 |  |
| 226 | 65 | チェックリストを実物で触る | 2026-11-07T09:00:00 | 2026-11-07T13:00:00 |  |  |  | 0 |  | 225 1 0 7 |  |
| 231 | 66 | PR を見て main へ合流する | 2026-11-08T10:00:00 | 2026-11-08T11:00:00 |  |  |  | 0 |  | 230 1 0 7 |  |
| 233 | 67 | Beta のタグを打ち、GitHub Release を作る | 2026-11-08T12:00:00 | 2026-11-08T13:00:00 |  |  |  | 0 |  | 232 1 0 7 |  |
| 234 | 68 | β 版のリリース(条件: β に入れた仕事が全部済み、GT-2 と PERF が通る。目安 11-09 09:00) | 2026-11-08T13:00:00 | 2026-11-08T13:00:00 | JDG-3001。日付で縛らない —— 目安は締め切り(deadline)に書いた。 |  |  | 0 | True | 233 1 0 7 | 2026-11-09T09:00:00 |
| 247 | 69 | β への計画の引き直しと利用者の答え 5 つの記録(JDG-3043〜3047) | 2026-10-22T08:15:00 | 2026-10-22T11:15:00 | 利用者と調整役が 10-22 08:00 に計画を見直した答え(JDG-3043〜3047)を記録し、計画を今日の始まりに合わせてずらした。 | 2026-10-22T08:15:00 |  | 0 |  |  |  |
| 248 | 70 | 読むだけの棚卸し(仕様・_source・_asset・コード・試験・道具の 6 つの所を数える) | 2026-10-22T08:15:00 | 2026-10-22T08:39:00 | JDG-3045・3046: α 版の直前の無理が残っていないかを数える。数を見て調整役が第 2 波の子セッションを改めて頼む。 | 2026-10-22T08:15:00 | 2026-10-22T08:39:00 | 100 |  |  |  |

| uid | wbsOrder | name | start | finish | notes | actualStart | percentComplete | dependencies |
| --- | --- | --- | --- | --- | --- | --- | --- | --- |
| 192 | 71 | GT-2 の赤 ③ uc-008:76(コメントのダブルクリックで PR-21 に焦点が入らない)の調べと直し | 2026-10-22T08:15:00 | 2026-10-22T12:15:00 | 利用者に見える後戻りの疑い(CR-811/812 が関わる疑い)。台帳の行は調べた子セッションが立てる。 | 2026-10-22T08:15:00 | 0 |  |
| 193 | 72 | GT-2 の赤 ① nfr-004 SWS-8(.tsv の IO-9 を押す探り)を足す | 2026-10-22T08:15:00 | 2026-10-22T10:15:00 |  | 2026-10-22T08:15:00 | 0 |  |
| 194 | 73 | GT-2 の赤 ② w3-t2(FR-135 の古い引用)を直す | 2026-10-22T10:15:00 | 2026-10-22T12:15:00 |  |  | 0 |  |
| 195 | 74 | 紹介頁・ダウンロード頁・デモの頁の語の直し(データだけ) | 2026-10-22T08:15:00 | 2026-10-22T12:15:00 | データだけの push は GT-2 なし(JDG-1965)。 | 2026-10-22T08:15:00 | 0 |  |
| 249 | 75 | 意図しない圧縮への備え(85% の知らせ・セッション台帳・引継書の検査・呼び名の統一)の仕組みと試し | 2026-10-22T08:15:00 | 2026-10-22T16:15:00 | JDG-3040〜3042・3044: 第 1 波と並行。試しは低いしきい値で知らせを出させ、コンテキストをわざと埋めない。 | 2026-10-22T08:15:00 | 0 |  |
| 250 | 76 | 利用者の裁定が要る 6 件(DFC-3390・3392・3393・3394・3395・3397)を 1 問ずつ問う | 2026-10-22T08:15:00 | 2026-10-22T10:15:00 | JDG-3047「今すぐ」: 1 問ずつ、場面・画面の名・2〜4 案・推奨と理由を添える(JDG-1753)。答えは利用者の行 200・218・238・254。 | 2026-10-22T08:15:00 | 0 |  |
| 262 | 77 | 裁定 6 件の答えの記録(JDG の行と台帳) | 2026-10-23T01:00:00 | 2026-10-23T03:00:00 | 利用者が今夜答えた後。台帳に触るので第 2 波はこの後に始める。 |  | 0 | 254 1 0 7 |
| 251 | 78 | 合流済みの作業木の掃除(第 1 波の後半) | 2026-10-22T15:15:00 | 2026-10-22T17:15:00 | 第 1 波の合流(198)の後。動いている子セッションの作業木には触れない。 |  | 0 |  |
| 253 | 79 | プロジェクト憲章(利用者が直した CHARTER-ja.md から)の仕上げ | 2026-10-23T23:00:00 | 2026-10-24T03:00:00 | 利用者が下書きを直した後に続ける。コミットするかは利用者が決める。 |  | 0 | 252 1 0 7 |
| 256 | 80 | W1 仕様と _source／_assets の掃除(棚卸しの A・B の行、C3 の仕様の側 PI-9) | 2026-10-23T03:00:00 | 2026-10-23T15:00:00 | 棚卸し docs/review/cleanup-inventory-2026-10-22.md の 10 節。見込み M(半日〜1 日)。触ってよいファイルは 10 節の表のとおり。 |  | 0 | 248 1 0 7 |
| 115 | 81 | edgeOf と baselineEdgeXOf(重複した関数, C1)の 1 つへの寄せ | 2026-10-23T03:00:00 | 2026-10-23T03:30:00 |  |  | 0 | 248 1 0 7 |
| 116 | 82 | NOT_STORED_DUMMY_SIZES(生成済みの寸法, C2・E28)の読まれない写しと古い注の始末 | 2026-10-23T03:30:00 | 2026-10-23T04:00:00 | 前の計画の前提(生成への置き換え)は違った —— もう生成済み(棚卸しの 9 節)。 |  | 0 |  |
| 196 | 83 | 衛生の小物(PlanActualState の中の語の 2 組, C8)の揃え | 2026-10-23T04:00:00 | 2026-10-23T06:00:00 | 作業木の掃除は第 1 波の行 251 へ分けた。見本の Developer C の重なりはわざと(棚卸しの C7) —— 利用者の行 263 で問う。 |  | 0 |  |
| 77 | 84 | 古い STOP の印 15 件(DFC-2730, C9)の除去 | 2026-10-23T06:00:00 | 2026-10-23T08:00:00 | 前の計画は 16 件と書いた。今は 15(棚卸しの C9・F2)。台帳の側(F2)は W5。 |  | 0 |  |
| 257 | 85 | W2 src の掃除(棚卸しの C4・C10・C15・E15・E16 ほか) | 2026-10-23T08:00:00 | 2026-10-24T01:00:00 | 棚卸しの 10 節。見込み M〜L(1 日) —— この行の 17 時間と、同じ行の 115・116・196・77・117 で 24 時間。中継の版の上げは 1 回、GT-2 が要る。CR-767(85・86・87・104…)はこの後。 |  | 0 |  |
| 117 | 86 | baseChangeCommandOf(名の複数形, C3)の言い直し —— W1 で仕様 PI-9 の名を直した後 | 2026-10-24T01:00:00 | 2026-10-24T03:00:00 | 仕様の PI-9 がこの名を名指すので、仕様の変更(W1)が先(棚卸しの 9 節)。 |  | 0 |  |
| 258 | 87 | W3 試験の掃除(棚卸しの D の行と G2) | 2026-10-23T03:00:00 | 2026-10-23T15:00:00 | 棚卸しの 10 節。見込み M(半日〜1 日)。D1・D7(known-red と時間切れを外す)は調整役の GT-2 の後(行 261)。 |  | 0 | 248 1 0 7 |
| 259 | 88 | W4 道具と目録の掃除(棚卸しの E の行・09-tools.md・About の版の形) | 2026-10-23T03:00:00 | 2026-10-23T15:00:00 | 棚卸しの 10 節。見込み M(半日〜1 日)。 |  | 0 | 248 1 0 7 |
| 118 | 89 | DFC-2646〜2648(STOP の仕分けで出た 3 行)の始末 —— 2647 の刈り取り(F3) | 2026-10-24T06:00:00 | 2026-10-24T06:30:00 | 台帳を書くのは W5 だけなので W5 の行に置いた。2646 は CR の候補(行 270)、2648 は大きさ L(棚卸しの F5)で後に残る。 |  | 0 |  |
| 260 | 90 | W5 台帳と記録の掃除(棚卸しの F の行。古い STOP の台帳 F2 は W2 の後) | 2026-10-24T06:30:00 | 2026-10-24T18:00:00 | 棚卸しの 10 節。台帳を書くのはこの持ち場だけ。W2 が着いた後、最後に回す。 |  | 0 |  |
| 15 | 91 | T-064(公開の名 約 479 の呼び出し形, DFC-2640)の書き起こしと再検討 | 2026-10-24T21:00:00 | 2026-10-25T09:00:00 |  |  | 0 |  |
| 264 | 92 | src の写しの畳み込み(C14・G13・F11・F12・F17) | 2026-10-28T19:00:00 | 2026-10-29T07:00:00 | 棚卸しの 10 節「第 2 波に入れない大きなもの」。大きさ L(時間は仮に 12 時間)。W2 の後。 |  | 0 |  |
| 12 | 93 | 罠の束(DFC-544・547・548・549)の実装 | 2026-10-29T07:00:00 | 2026-10-29T15:00:00 |  |  | 0 |  |
| 20 | 94 | 実装待ちの残り(DFC-464・532〜562・582・630 ほか 35 行)の実装 | 2026-10-29T15:00:00 | 2026-10-30T07:00:00 |  |  | 0 |  |
| 203 | 95 | 予定の日が 1 日前へずれる疑い(初見 AI の試験の子セッションの報告)の再現と直し | 2026-10-31T09:00:00 | 2026-10-31T17:00:00 | 再現の点は引継書。台帳の行は再現した子セッションが立てる。 |  | 0 |  |
| 204 | 96 | 依存線の縦の部分が重なる(O-1)の直し | 2026-10-31T17:00:00 | 2026-10-31T21:00:00 | CR が要る(描き方)。 |  | 0 |  |
| 235 | 97 | DFC-3396(.html に保存して開くと表示の状態が違う)の再現と直し | 2026-10-31T21:00:00 | 2026-11-01T01:00:00 | 再現の手順はまだ無い。集めることは台帳の行。直すのに CR が要るかは再現してから。 |  | 0 |  |
| 270 | 98 | 食い違う写しの畳み込みと px の比べ方の揃え(F4 DFC-2646・F9 DFC-630)の CR の起草と当て | 2026-11-01T01:00:00 | 2026-11-01T09:00:00 | 棚卸しの 11 節。CR の候補(答えが変わる疑い)。 |  | 0 |  |
| 211 | 99 | CR-813 の 2 片目(遅延診断レポートの親子関係のタブ, DFC-3358)の当て | 2026-11-04T19:00:00 | 2026-11-05T07:00:00 | 設計は CR-813 の 2 片目の節。利用者が実物で試してから Agent API と GRS Relay へ。 |  | 0 |  |
| 46 | 100 | CR-697(取次が口と鍵を覚える)の起草と当て | 2026-11-05T07:00:00 | 2026-11-05T11:00:00 | CR を起草する。 |  | 0 |  |
| 245 | 101 | DFC-3410(名前付きのフィルタの条件)の仕様と実装 | 2026-11-05T11:00:00 | 2026-11-06T03:00:00 | ハイパーリンクとダークの任意色の実装(219)が形式の版を上げた後に始める。 |  | 0 | 244 1 0 7 |
| 222 | 102 | 実測待ちの行を出荷ビルドで押す(1/3: 日程表・パネル・ドラッグ) | 2026-11-06T14:00:00 | 2026-11-07T02:00:00 | 実測待ち 約 525 行。Playwright で画面ごとに押し、実測済へ。 |  | 0 |  |
| 227 | 103 | チェックリストで出た直し(仮置き) | 2026-11-07T13:00:00 | 2026-11-07T21:00:00 |  |  | 0 | 226 1 0 7 |
| 85 | 104 | CR-767(状態機械の原稿)の波 1 の実装 | 2026-10-24T21:00:00 | 2026-10-25T03:00:00 |  |  | 0 |  |
| 86 | 105 | CR-767(状態機械の原稿)の波 2 の実装 | 2026-10-25T03:00:00 | 2026-10-25T09:00:00 |  |  | 0 |  |
| 104 | 106 | CR-768(保存の媒体の型)の C と CM-27 の注の実装 | 2026-10-25T10:00:00 | 2026-10-25T14:00:00 |  |  | 0 |  |
| 27 | 107 | W4(アダプタ層の分割)の前半 CR-578→579→580 の実装(偶然の写し DFC-1071〜1073) | 2026-10-28T19:00:00 | 2026-10-29T11:00:00 |  |  | 0 |  |
| 28 | 108 | W4 の後半(CR-581 の後半と properties-panel、DFC-1074・1075)の実装 | 2026-10-29T11:00:00 | 2026-10-30T03:00:00 |  |  | 0 |  |
| 29 | 109 | W5(異常系 DFC-586 ほか)の仕様 | 2026-10-30T03:00:00 | 2026-10-30T11:00:00 |  |  | 0 |  |
| 30 | 110 | W5(異常系)の実装と試験 —— 既知の赤 cr-586-iv-22 の 2 件(DFC-922)を緑に | 2026-10-30T11:00:00 | 2026-10-31T03:00:00 |  |  | 0 |  |
| 217 | 111 | DFC-3393・3394(ハイパーリンク・ダークの任意色)の CR の起草 | 2026-10-31T03:00:00 | 2026-10-31T07:00:00 | MSPDI は Task に Hyperlink・HyperlinkAddress・HyperlinkSubAddress を持つ。形式の版を 1 回だけ上げる(FR-073)。古い形を読む道は作らない。 |  | 0 | 218 1 0 7 |
| 243 | 112 | DFC-3410(フィルタの条件に名前を付けて GRS JSON に幾つも保存する)の CR の起草 | 2026-10-31T07:00:00 | 2026-10-31T11:00:00 | 細部は利用者と別に詰める(JDG-3030「詳細は別途」)。FR-151 の結びの段・表 T-203 の S-560〜S-572・表 T-372 を読む。形式の版を DFC-3393・3394 と 1 回にまとめられるか見る。 |  | 0 |  |
| 219 | 113 | ハイパーリンクとダークの任意色の仕様と実装 | 2026-10-31T11:00:00 | 2026-11-01T03:00:00 |  |  | 0 | 218 1 0 7 |
| 237 | 114 | DFC-3397(横に拡大して両端が外に出たタスクの名前を左端に出す)の CR の起草 | 2026-11-01T03:00:00 | 2026-11-01T07:00:00 | 細部は利用者と別に協議する(JDG-3006)。表 T-273(FR-109)の LP-1〜LP-6 と札の並び(表 T-272)を読む。 |  | 0 | 238 1 0 7 |
| 239 | 115 | DFC-3397(左端に出す名前と札)の仕様と実装 | 2026-11-01T07:00:00 | 2026-11-01T15:00:00 |  |  | 0 | 238 1 0 7 |
| 225 | 116 | 利用者のチェックリスト 1 枚(今日の 5 件・新機能・押せなかった行) | 2026-11-07T02:00:00 | 2026-11-07T06:00:00 |  |  | 0 |  |
| 17 | 117 | 試験待ち 23 行(DFC-550・567・641 ほか)の仕様だけを読む試験 | 2026-10-24T21:00:00 | 2026-10-25T05:00:00 |  |  | 0 |  |
| 265 | 118 | 長い関数とファイルを割る(C19・F13、07 R2 の設計の判断) | 2026-10-25T05:00:00 | 2026-10-25T17:00:00 | 棚卸しの 10 節「第 2 波に入れない大きなもの」。大きさ L(時間は仮に 12 時間)。 |  | 0 |  |
| 266 | 119 | 試験の補助の写しの共通化(D14・D15) | 2026-10-28T19:00:00 | 2026-10-29T07:00:00 | 棚卸しの 10 節「第 2 波に入れない大きなもの」。大きさ L(時間は仮に 12 時間)。W3 の後に 1 つの子セッションで。 |  | 0 |  |
| 13 | 120 | 用語集の JSON 化(DFC-2175、7 表 382 行)の仕様と実装 | 2026-10-29T07:00:00 | 2026-10-29T19:00:00 | 数は棚卸しの A3 で 9 表 463 行から直した。第 2 波には入れない(_source の生成器と検査が W1 とぶつかる)。 |  | 0 |  |
| 201 | 121 | DFC-3390(基準日より後のタスクの ? と炎)の CR の起草と当て | 2026-10-31T09:00:00 | 2026-10-31T17:00:00 | CR が要る(表 T-315・T-316、FR-133・FR-136)。 |  | 0 | 200 1 0 7 |
| 242 | 122 | 取次から AI がページのアドレスを得る恒久の直し(DFC-3400・3401: B1〜B6 を決めてから CR) | 2026-10-31T17:00:00 | 2026-11-01T01:00:00 | 調べた子セッションの推奨は B1(取次が自分で答える道具 getPageUrl、案内の 1 行目で呼ばせる)。CR-697(口と鍵を覚える)とは別の直し。 |  | 0 | 241 1 0 7 |
| 205 | 123 | ポインタの当たり判定(予定と依存線の優先順位)の見直し —— 見本と Playwright の掃き | 2026-11-01T01:00:00 | 2026-11-01T09:00:00 | 利用者 2026-10-17 の報告。ログは利用者の手元。CR が要る。 |  | 0 |  |
| 268 | 124 | 既定値の選び直しと公開スキーマの $id・比率の数(A10・B5・B10・F27)の CR の起草と当て | 2026-11-01T09:00:00 | 2026-11-01T17:00:00 | 棚卸しの 11 節。振る舞いが変わるので掃除の外。 |  | 0 |  |
| 214 | 125 | 中継の所見の残り(R5: 4・8・9・10・11・14・17・20・24)の当て | 2026-11-04T19:00:00 | 2026-11-05T07:00:00 | CR が要る。 |  | 0 |  |
| 215 | 126 | 中継の所見の「低」8 件(13・16・17・18・19・20・23・25) | 2026-11-05T07:00:00 | 2026-11-05T15:00:00 |  |  | 0 |  |
| 47 | 127 | DFC-2214・2215(AI が読む遅延診断にイナズマ線の頂点・読み方)の仕様と実装 | 2026-11-05T15:00:00 | 2026-11-05T19:00:00 |  |  | 0 |  |
| 220 | 128 | ハイパーリンクとダークの任意色の仕様だけを読む試験(別のサブエージェント) | 2026-11-05T19:00:00 | 2026-11-06T03:00:00 | 作り手は自分の単位を試験しない。 |  | 0 | 219 1 0 7 |
| 11 | 129 | 未検討 72 行(DFC-611・2560〜2569・2690〜2699・2770 ほか)のトリアージ | 2026-10-24T21:00:00 | 2026-10-25T05:00:00 |  |  | 0 |  |
| 267 | 130 | 道具の補助の写しの共通化(E20〜E22) | 2026-10-25T05:00:00 | 2026-10-25T17:00:00 | 棚卸しの 10 節「第 2 波に入れない大きなもの」。大きさ L(時間は仮に 12 時間)。共通の部品の置き場の設計から。 |  | 0 |  |
| 32 | 131 | トリアージで出た直しの実装 | 2026-10-28T19:00:00 | 2026-10-29T11:00:00 |  |  | 0 |  |
| 202 | 132 | DFC-3391・3392(プロンプトは本文だけ写し、スキーマは自動で保存)の CR の起草と当て | 2026-10-31T09:00:00 | 2026-10-31T17:00:00 | CR が要る(FR-068 の (3)・JDG-502 の一部を覆す、新しい IO- の行)。DFC-3391 の再現の手順もこの子セッションが探す。DFC-3392 の答えは行 254。 |  | 0 | 254 1 0 7 |
| 206 | 133 | 日付の範囲(S-119/S-120 と MS Project の 1984〜2149)・DFC-3003(ライセンスの窓) | 2026-10-31T17:00:00 | 2026-10-31T21:00:00 |  |  | 0 |  |
| 236 | 134 | DFC-3395(保存の確認がサイトの名を出し、通信するように読める)の調べと対応の案 | 2026-10-31T21:00:00 | 2026-10-31T23:00:00 | DFC-3395 の答え(行 254)に沿って手当てする。 |  | 0 | 254 1 0 7 |
| 269 | 135 | uid の最高水位と「行」と「タスクグループ」(F10 DFC-1066・F25 DFC-2174)の CR の起草と当て | 2026-10-31T23:00:00 | 2026-11-01T07:00:00 | 棚卸しの 11 節。振る舞いが変わるので掃除の外。 |  | 0 |  |
| 212 | 136 | CR-815(絞った表を AI が選んだ列でページに分けて読む)の当て | 2026-11-01T07:00:00 | 2026-11-01T19:00:00 |  |  | 0 |  |
| 213 | 137 | 接続が黙って切れる件(DFC-3340〜3342: ping・ページの下書き)の当て | 2026-11-04T19:00:00 | 2026-11-05T07:00:00 | DFC-3341 の下書きは CR が要る(L)。 |  | 0 |  |
| 240 | 138 | DFC-3397(左端に出す名前と札)の仕様だけを読む試験(別のサブエージェント) | 2026-11-05T07:00:00 | 2026-11-05T11:00:00 | 作り手は自分の単位を試験しない。 |  | 0 | 239 1 0 7 |
| 223 | 139 | 実測待ちの行を出荷ビルドで押す(2/3: 遅延診断・表・検索) | 2026-11-06T14:00:00 | 2026-11-07T02:00:00 |  |  | 0 |  |
| 197 | 140 | サーバー同期のデモの仕上げ(DFC-3070・3071 の状態を測り直し、配る zip で試す) | 2026-10-22T12:15:00 | 2026-10-22T16:15:00 | アプリ本体(dist/index.html)は 1 バイトも変えない。利用者 2026-10-17「まずは動くものを作るのが先だ」。 |  | 0 |  |

| uid | wbsOrder | name | start | finish | notes | percentComplete | dependencies |
| --- | --- | --- | --- | --- | --- | --- | --- |
| 18 | 141 | 仕様待ち 31 行の残り(DFC-560・631・1063〜1073 ほか)の CR の起草 | 2026-10-24T21:00:00 | 2026-10-25T01:00:00 |  | 0 |  |
| 35 | 142 | 仕様待ちの残りの CR の実装 | 2026-10-25T01:00:00 | 2026-10-25T17:00:00 |  | 0 |  |
| 19 | 143 | DFC-730(GP-1 編集権限の行は読み取り専用)の実装 | 2026-10-28T19:00:00 | 2026-10-28T23:00:00 |  | 0 |  |
| 167 | 144 | DFC-2966・2967・2969(文書の形と実績の組み合わせの表, 束 E)の仕様と実装 | 2026-10-28T23:00:00 | 2026-10-29T07:00:00 |  | 0 |  |
| 208 | 145 | 性能の赤の切り分け —— 前の版との交互の比べ(JDG-726)と GR-28・MK-1 のプロファイル | 2026-10-31T09:00:00 | 2026-10-31T17:00:00 | α の PERF: MK-1 32.95 fps・MK-2 25.89・MK-7 30.43・GR-28 6.85 fps(60 fps に届かない、NFR-002/003)。 | 0 |  |
| 209 | 146 | 重い処理の直し(最も遅い GR-28 から) | 2026-10-31T17:00:00 | 2026-11-01T09:00:00 | CR が要る(描く手順の変更)。 | 0 |  |
| 246 | 147 | DFC-3410(名前付きのフィルタの条件)の仕様だけを読む試験(別のサブエージェント) | 2026-11-06T03:00:00 | 2026-11-06T11:00:00 | 作り手は自分の単位を試験しない。 | 0 | 245 1 0 7 |
| 224 | 148 | 実測待ちの行を出荷ビルドで押す(3/3: ファイル・書き出し・AI 連携) | 2026-11-06T14:00:00 | 2026-11-07T02:00:00 |  | 0 |  |
